# lam lai

Schedule from MS Project, 2022-09-01 to 2022-10-26, status date 2022-10-12, costs in $, A marks actual dates.

## Calendars

- Khách sạn: Mon-Sun 08:00-12:00, 13:00-17:00.

## Resources

| Resource | Group | Rate |
| --- | --- | --- |
| Tô Thị Hồng Thắm | Leader | 28 |
| Phạm Thị Thanh Ngân | Member | 22 |
| Đinh Thị Hà Phương | Member | 24 |
| Mai Minh Thư | Member | 24 |
| Máy tính | Material | 1000 |
| Phí bảo trì |  |  |
| Nguyễn Thanh Tùng | Member | 21 |
| Trần Thị Mỹ Ngọc | Member | 25 |
| Trần Thái Thanh | Member | 20 |
| Phí di chuyển |  |  |
| phí lắp đặt |  |  |

## Schedule

| ID | WBS | Task | Duration | Start | Finish | Predecessors | Complete | Remaining | Total slack | Resources | Work | Actual work | Cost | Actual cost |
| --- | --- | --- | --- | --- | --- | --- | --- | --- | --- | --- | --- | --- | --- | --- |
| 1 | 1 | **Project** | 56d | 2022-09-01 A | 2022-10-26 |  | 99% | 0d | 0d |  | 512h | 512h | 21,452 | 20,152 |
| 2 | 1.1 | **Tuần 1** | 7d | 2022-09-01 A | 2022-09-07 A |  | 100% |  |  |  | 64h | 64h | 1,376 | 1,376 |
| 3 | 1.1.1 | **Thu thập yêu cầu** | 4d | 2022-09-01 A | 2022-09-04 A |  | 100% |  |  |  | 32h | 32h | 712 | 712 |
| 4 | 1.1.1.1 | Xác định và chọn lọc các câu hỏi để khai thác chức năng | 2d | 2022-09-01 A | 2022-09-02 A |  | 100% |  |  | Trần Thái Thanh | 16h | 16h | 320 | 320 |
| 5 | 1.1.1.2 | Đưa ra các gợi ý cho người được hỏi để dễ lấy được thông tin cần thiết | 1d | 2022-09-03 A | 2022-09-03 A | 4 | 100% |  |  | Nguyễn Thanh Tùng | 8h | 8h | 168 | 168 |
| 6 | 1.1.1.3 | Đánh giá yêu cầu thu thập được | 1d | 2022-09-04 A | 2022-09-04 A | 5 | 100% |  |  | Tô Thị Hồng Thắm | 8h | 8h | 224 | 224 |
| 7 | 1.1.2 | **Phân tích yêu cầu** | 3d | 2022-09-05 A | 2022-09-07 A | 3 | 100% |  |  |  | 32h | 32h | 664 | 664 |
| 8 | 1.1.2.1 | Đánh giá bảng phân tích yêu cầu | 2d | 2022-09-05 A | 2022-09-06 A | 6 | 100% |  |  | Nguyễn Thanh Tùng | 16h | 16h | 336 | 336 |
| 9 | 1.1.2.2 | Chỉnh sửa nội dung phân tích hoặc thu thập lại yêu cầu nếu cần thiết. | 1d | 2022-09-07 A | 2022-09-07 A | 8 | 100% |  |  | Trần Thái Thanh; Nguyễn Thanh Tùng | 16h | 16h | 328 | 328 |
| 10 | 1.2 | **Tuần 2** | 7d | 2022-09-08 A | 2022-09-14 A | 2 | 100% |  |  |  | 56h | 56h | 3,232 | 3,232 |
| 11 | 1.2.1 | **Phân tích thiết kế hệ thống** | 5d | 2022-09-08 A | 2022-09-12 A |  | 100% |  |  |  | 32h | 32h | 2,688 | 2,688 |
| 12 | 1.2.1.1 | Thiết kế Use Case Diagram | 1d | 2022-09-08 A | 2022-09-08 A | 9 | 100% |  |  | Máy tính; Phạm Thị Thanh Ngân | 8h | 8h | 1,176 | 1,176 |
| 13 | 1.2.1.2 | Thiết kế Screen Flow Diagram | 1d | 2022-09-09 A | 2022-09-10 A | 12 | 100% |  |  | Máy tính; Nguyễn Thanh Tùng | 8h | 8h | 1,168 | 1,168 |
| 14 | 1.2.1.3 | Thiết kế Activity Diagram | 1d | 2022-09-10 A | 2022-09-12 A | 13 | 100% |  |  | Phạm Thị Thanh Ngân | 8h | 8h | 176 | 176 |
| 15 | 1.2.1.4 | Thiết kế Sequence Diagram | 1d | 2022-09-11 A | 2022-09-12 A | 14 | 100% |  |  | Nguyễn Thanh Tùng | 8h | 8h | 168 | 168 |
| 16 | 1.2.2 | **Đánh giá phân tích thiết kế hệ thống** | 3d | 2022-09-12 A | 2022-09-14 A | 11 | 100% |  |  |  | 24h | 24h | 544 | 544 |
| 17 | 1.2.2.1 | Kiểm tra tính hợp lý của PTTK HT | 1d | 2022-09-12 A | 2022-09-12 A | 15 | 100% |  |  | Đinh Thị Hà Phương | 8h | 8h | 192 | 192 |
| 18 | 1.2.2.2 | Viết báo cáo | 1d | 2022-09-13 A | 2022-09-13 A | 17 | 100% |  |  | Phạm Thị Thanh Ngân; Nguyễn Thanh Tùng | 8h | 8h | 176 | 176 |
| 19 | 1.2.2.3 | Chỉnh sửa PTTK HT nếu cần | 1d | 2022-09-14 A | 2022-09-14 A | 18 | 100% |  |  | Phạm Thị Thanh Ngân | 8h | 8h | 176 | 176 |
| 20 | 1.3 | **Tuần 3** | 8d | 2022-09-15 A | 2022-09-22 A | 10 | 100% |  |  |  | 56h | 56h | 5,376 | 5,376 |
| 21 | 1.3.1 | **Thiết kế giao diện** | 8d | 2022-09-15 A | 2022-09-22 A |  | 100% |  |  |  | 56h | 56h | 5,376 | 5,376 |
| 22 | 1.3.1.1 | Thiết kế giao diện đăng nhập | 1d | 2022-09-15 A | 2022-09-16 A | 19 | 100% |  |  | Máy tính; Trần Thị Mỹ Ngọc | 8h | 8h | 1,200 | 1,200 |
| 23 | 1.3.1.2 | Thiết kế giao diện đăng kí | 1d | 2022-09-16 A | 2022-09-17 A | 22 | 100% |  |  | Trần Thị Mỹ Ngọc | 8h | 8h | 200 | 200 |
| 24 | 1.3.1.3 | Thiết kế giao diện quản lí khách sạn | 2d | 2022-09-17 A | 2022-09-18 A | 23 | 100% |  |  | Máy tính [200%]; Mai Minh Thư | 16h | 16h | 2,384 | 2,384 |
| 25 | 1.3.1.4 | Thiết kế giao diện quản lý nhân sự | 1d | 2022-09-19 A | 2022-09-19 A | 24 | 100% |  |  | Trần Thị Mỹ Ngọc | 8h | 8h | 200 | 200 |
| 26 | 1.3.1.5 | Thiết kế giao diện thanh toán | 1d | 2022-09-20 A | 2022-09-21 A | 25 | 100% |  |  | Máy tính; Mai Minh Thư | 8h | 8h | 1,192 | 1,192 |
| 27 | 1.3.1.6 | Thiết kế giao diện thống kê doanh thu | 1d | 2022-09-21 A | 2022-09-22 A | 26 | 100% |  |  | Trần Thị Mỹ Ngọc | 8h | 8h | 200 | 200 |

| ID | WBS | Task | Duration | Start | Finish | Predecessors | Complete | Remaining | Total slack | Resources | Work | Actual work | Cost | Actual cost |
| --- | --- | --- | --- | --- | --- | --- | --- | --- | --- | --- | --- | --- | --- | --- |
| 28 | 1.4 | **Tuần 4-6** | 21d | 2022-09-22 A | 2022-10-12 A | 20 | 100% |  |  |  | 168h | 168h | 4,952 | 4,952 |
| 29 | 1.4.1 | **Thiết kế cơ sở dữ liệu** | 10d | 2022-09-22 A | 2022-10-01 A |  | 100% |  |  |  | 40h | 40h | 880 | 880 |
| 30 | 1.4.1.1 | Thiết kế CSDL | 5d | 2022-09-22 A | 2022-10-01 A | 27 | 100% |  |  | Phạm Thị Thanh Ngân | 40h | 40h | 880 | 880 |
| 31 | 1.4.2 | **Code thực hiện các chức năng** | 16d | 2022-09-27 A | 2022-10-12 A | 29 | 100% |  |  |  | 128h | 128h | 4,072 | 4,072 |
| 32 | 1.4.2.1 | Hiện thực các công việc con của Thiết kế giao diện | 16d | 2022-09-27 A | 2022-10-12 A | 30 | 100% |  |  | Mai Minh Thư; Máy tính; Trần Thị Mỹ Ngọc | 128h | 128h | 4,072 | 4,072 |
| 33 | 1.5 | **Tuần 7** | 7d | 2022-10-13 A | 2022-10-19 A | 28 | 100% |  |  |  | 96h | 96h | 2,352 | 2,352 |
| 34 | 1.5.1 | **Tổng hợp tài liệu** | 5d | 2022-10-13 A | 2022-10-17 A |  | 100% |  |  |  | 56h | 56h | 1,344 | 1,344 |
| 35 | 1.5.1.1 | Ghép tài liệu | 2d | 2022-10-13 A | 2022-10-14 A | 32 | 100% |  |  | Mai Minh Thư; Đinh Thị Hà Phương | 16h | 16h | 384 | 384 |
| 36 | 1.5.1.2 | Viết hướng dẫn sử dụng phần mềm | 2d | 2022-10-15 A | 2022-10-16 A | 35 | 100% |  |  | Phạm Thị Thanh Ngân; Đinh Thị Hà Phương | 32h | 32h | 736 | 736 |
| 37 | 1.5.1.3 | Kiểm tra lại tài liệu | 1d | 2022-10-17 A | 2022-10-17 A | 36 | 100% |  |  | Tô Thị Hồng Thắm | 8h | 8h | 224 | 224 |
| 38 | 1.5.2 | **Viết báo cáo** | 2d | 2022-10-18 A | 2022-10-19 A | 34 | 100% |  |  |  | 40h | 40h | 1,008 | 1,008 |
| 39 | 1.5.2.1 | Viết báo cáo | 1d | 2022-10-18 A | 2022-10-18 A | 37 | 100% |  |  | Tô Thị Hồng Thắm; Phạm Thị Thanh Ngân; Mai Minh Thư; Đinh Thị Hà Phương | 32h | 32h | 784 | 784 |
| 40 | 1.5.2.2 | Kiểm tra lại báo cáo | 1d | 2022-10-19 A | 2022-10-19 A | 39 | 100% |  |  | Tô Thị Hồng Thắm | 8h | 8h | 224 | 224 |
| 41 | 1.6 | **Tuần 8** | 7d | 2022-10-20 A | 2022-10-26 | 33 | 99% | 0d | 0d |  | 72h | 72h | 4,164 | 2,864 |
| 42 | 1.6.1 | **Testing lại toàn bộ chương trình** | 2d | 2022-10-20 A | 2022-10-21 A |  | 100% |  |  |  | 16h | 16h | 384 | 384 |
| 43 | 1.6.1.1 | Nhập vào các trường hợp lỗi/ sai để test tính đúng đắn của phần mềm | 2d | 2022-10-20 A | 2022-10-21 A | 40 | 100% |  |  | Đinh Thị Hà Phương | 16h | 16h | 384 | 384 |
| 44 | 1.6.2 | **Triển khai phần mềm** | 5d | 2022-10-22 A | 2022-10-26 | 42 | 99% | 0d | 0d |  | 56h | 56h | 3,780 | 2,480 |
| 45 | 1.6.2.1 | Trình bày về đồ án | 2d | 2022-10-22 A | 2022-10-23 A | 43 | 100% |  |  | Tô Thị Hồng Thắm; Đinh Thị Hà Phương; Máy tính | 32h | 32h | 1,832 | 1,832 |
| 46 | 1.6.2.2 | Cài đặt phần mềm trên hệ thống của khách hàng yêu cầu | 1d | 2022-10-24 A | 2022-10-25 | 45 | 99% | 0d | 1d | Tô Thị Hồng Thắm; Trần Thị Mỹ Ngọc; Phí bảo trì [0.1%]; Phí di chuyển [0.1%]; phí lắp đặt [0.1%] | 16h | 16h | 1,724 | 424 |
| 47 | 1.6.2.3 | Nộp báo cáo | 1d | 2022-10-26 A | 2022-10-26 A | 46 | 100% |  |  | Tô Thị Hồng Thắm | 8h | 8h | 224 | 224 |
